# Организация научно-практической конференции (PERT 1-4-1)

Schedule from MS Project, 2026-10-05 to 2026-11-23, status date 2026-10-05, costs in ₽.
Учебный проект

## Calendars

- Стандартный: Mon-Fri 08:00-12:00, 13:00-17:00; Sat-Sun off. Exceptions (off unless hours are given): 2026-11-04 (День народного единства).

## Resources

| Resource | Group | Unit | Rate | Cost per use |
| --- | --- | --- | --- | --- |
| Иванов И.И. | Управление |  | 1200 |  |
| Сорокина С.Т. | Оргкомитет |  | 1000 |  |
| Петров П.П. | Дизайн |  | 900 |  |
| Смирнова А.В. | Секретариат |  | 1100 |  |
| Кузнецов Д.А. | Техника |  | 1100 |  |
| Орлова Е.Н. | Методика |  | 700 |  |
| Волков М.С. | Приём |  | 800 | 500 |
| Печать программ | Материалы | лист | 5 |  |
| Аренда зала и техники | Инфраструктура |  |  |  |

## Schedule

| ID | WBS | Task | Type | Duration | Start | Finish | Predecessors | Total slack | Free slack | Constraint | Deadline | Resources | Work | Cost | Ответственный |
| --- | --- | --- | --- | --- | --- | --- | --- | --- | --- | --- | --- | --- | --- | --- | --- |
| 1 | 1 | **Инициация** |  | 8.38d | 2026-10-05 | 2026-10-15 |  | 0d |  |  |  |  | 92.5h | 102,600 |  |
| 2 | 1.1 | Первое заседание оргкомитета |  | 1.12d | 2026-10-05 | 2026-10-06 |  | 0d |  |  |  | Иванов И.И.; Сорокина С.Т. | 18h | 19,800 | Иванов И.И. |
| 3 | 1.2 | Определение тематики и целевой аудитории |  | 4.12d | 2026-10-06 | 2026-10-12 | 2 | 0d |  |  |  | Сорокина С.Т.; Иванов И.И. [50%] | 49.5h | 52,800 | Сорокина С.Т. |
| 4 | 1.3 | Разработка положения о конференции |  | 3.12d | 2026-10-12 | 2026-10-15 | 3 | 0d |  |  |  | Иванов И.И. | 25h | 30,000 | Иванов И.И. |
| 5 | 1.4 | Положение утверждено | milestone | 0d | 2026-10-15 | 2026-10-15 | 4 | 0d |  |  |  |  |  |  |  |
| 6 | 2 | **Программный комитет** |  | 12.62d | 2026-10-15 | 2026-11-02 |  | 0d |  |  |  |  | 113.5h | 86,950 |  |
| 7 | 2.1 | Сбор аннотаций и тезисов |  | 5.38d | 2026-10-15 | 2026-10-22 | 5 | 0d |  |  |  | Орлова Е.Н. | 43h | 30,100 | Орлова Е.Н. |
| 8 | 2.2 | Рецензирование материалов |  | 4.12d | 2026-10-22 | 2026-10-28 | 7 | 0d |  |  |  | Орлова Е.Н. | 33h | 23,100 | Орлова Е.Н. |
| 9 | 2.3 | Формирование программы конференции |  | 3.12d | 2026-10-28 | 2026-11-02 | 8 | 0d |  |  |  | Сорокина С.Т.; Орлова Е.Н. [50%] | 37.5h | 33,750 | Сорокина С.Т. |
| 10 | 2.4 | Программа утверждена | milestone | 0d | 2026-11-02 | 2026-11-02 | 9 | 0d |  |  |  |  |  |  |  |
| 11 | 3 | **Логистика** |  | 9.5d | 2026-10-15 | 2026-10-28 |  | 8.12d |  |  |  |  | 113.5h | 168,650 |  |
| 12 | 3.1 | Подбор зала и технического оборудования |  | 4.12d | 2026-10-15 | 2026-10-21 | 5 | 8.12d | 0d |  |  | Кузнецов Д.А. | 33h | 86,300 | Кузнецов Д.А. |
| 13 | 3.2 | Организация кофе-брейков и обеда |  | 3.12d | 2026-10-16 | 2026-10-21 | 12SS+1d | 13.5d | 5.38d |  |  | Смирнова А.В.; Кузнецов Д.А. [50%] | 37.5h | 41,250 | Смирнова А.В. |
| 14 | 3.3 | Транспорт и размещение спикеров |  | 5.38d | 2026-10-21 | 2026-10-28 | 12, 13FF | 8.12d | 0d |  |  | Смирнова А.В. [50%]; Волков М.С. [50%] | 43h | 41,100 | Смирнова А.В. |
| 15 | 3.4 | Логистика подтверждена | milestone | 0d | 2026-10-28 | 2026-10-28 | 13, 14 | 8.12d | 0d |  |  |  |  |  |  |
| 16 | 4 | **Материалы и публичность** |  | 11.25d | 2026-10-28 | 2026-11-16 |  | 0d |  |  |  |  | 100h | 90,200 |  |
| 17 | 4.1 | Создание сайта конференции |  | 6.12d | 2026-11-03 | 2026-11-12 | 10 | 0d |  |  |  | Петров П.П. | 49h | 44,100 | Петров П.П. |
| 18 | 4.2 | Рассылка первого сообщения |  | 2d | 2026-11-12 | 2026-11-16 | 17 | 0d |  |  |  | Смирнова А.В. | 16h | 17,600 | Смирнова А.В. |
| 19 | 4.3 | Печать программ и бейджей |  | 3.12d | 2026-10-28 | 2026-11-02 | 15 | 8.12d |  |  |  | Печать программ [500 лист] |  | 2,500 |  |
| 20 | 4.4 | Подготовка сборника тезисов к печати |  | 4.38d | 2026-10-28 | 2026-11-05 | 8 | 6.88d |  |  |  | Орлова Е.Н.; Печать программ [300 лист] | 35h | 26,000 | Орлова Е.Н. |
| 21 | 4.5 | Материалы готовы | milestone | 0d | 2026-11-16 | 2026-11-16 | 19, 20, 18 | 0d |  |  |  |  |  |  |  |
| 22 | 5 | **Проведение** |  | 5.38d | 2026-11-16 | 2026-11-23 |  | 0d |  |  |  |  | 60.5h | 58,750 |  |
| 23 | 5.1 | Регистрация участников |  | 1d | 2026-11-16 | 2026-11-17 | 21 | 0d |  | start no earlier than 2026-10-05 |  | Волков М.С. | 8h | 6,900 | Волков М.С. |
| 24 | 5.2 | Открытие и пленарное заседание |  | 1.12d | 2026-11-17 | 2026-11-18 | 23 | 0d |  |  |  | Иванов И.И.; Сорокина С.Т. | 18h | 19,800 | Иванов И.И. |
| 25 | 5.3 | Работа секций |  | 2.12d | 2026-11-18 | 2026-11-20 | 24 | 0d |  |  |  | Орлова Е.Н.; Кузнецов Д.А. [50%] | 25.5h | 21,250 | Орлова Е.Н. |
| 26 | 5.4 | Заключительная сессия и подведение итогов |  | 1.12d | 2026-11-20 | 2026-11-23 | 25 | 0d |  |  |  | Иванов И.И. | 9h | 10,800 | Иванов И.И. |
| 27 | 5.5 | Конференция завершена | milestone | 0d | 2026-11-23 | 2026-11-23 | 26 | 0d |  |  | 2026-11-23 |  |  |  |  |

Notes:
- 2: Повестка дня: / 1. Цели и тематика конференции. / 2. Состав оргкомитета и программного комитета. / 3. Ограничения: бюджет, сроки, вместимость зала. / 4. План-график подготовки программы.
- 18: Список рассылки: / - участники прошлых лет / - партнёрские вузы / - профильные кафедры
